# OzBuild.mpp

How a schedule from MS Project changed from version to version. A marks actual dates.

## Version 1 (saved 2021-10-18, file OzBuild Workshop 04.mpp)

| ID | Task | Duration | Start | Finish | Total float |
| --- | --- | --- | --- | --- | --- |
| 1 | Approval to Bid | 0d | 2024-12-09 | 2024-12-09 | 8d |
| 2 | Determine Installation Requirements | 4d | 2024-12-09 | 2024-12-12 | 4d |
| 3 | Create Technical Specification | 5d | 2024-12-09 | 2024-12-13 | 3d |
| 4 | Identify Supplier Components | 2d | 2024-12-09 | 2024-12-10 | 6d |
| 5 | Validate Technical Specification | 2d | 2024-12-09 | 2024-12-10 | 6d |
| 6 | Document Delivery Methodology | 4d | 2024-12-09 | 2024-12-12 | 4d |
| 7 | Obtain Quotes from Suppliers | 8d | 2024-12-09 | 2024-12-18 | 0d |
| 8 | Calculate the Bid Estimate | 3d | 2024-12-09 | 2024-12-11 | 6d |
| 9 | Create the Project Schedule | 3d | 2024-12-09 | 2024-12-11 | 6d |
| 10 | Review the Delivery Plan | 1d | 2024-12-09 | 2024-12-09 | 7d |
| 11 | Create Draft of Bid Document | 6d | 2024-12-09 | 2024-12-16 | 2d |
| 12 | Review Bid Document | 4d | 2024-12-09 | 2024-12-12 | 4d |
| 13 | Finalize and Submit Bid Document | 2d | 2024-12-09 | 2024-12-10 | 6d |
| 14 | Bid Document Submitted | 0d | 2024-12-09 | 2024-12-09 | 8d |

## Version 2 (saved 2021-10-26, file OzBuild Workshop With Resources.mpp)

Last finish 2024-12-18 → 2025-01-27 (+40d).

Added:

| ID | Task | Duration | Start | Finish |
| --- | --- | --- | --- | --- |
| 1 | **Bid for Facility Extension** | 33d | 2024-12-09 | 2025-01-27 |
| 2 | **Technical Specification** | 13d | 2024-12-09 | 2024-12-27 |
| 8 | **Delivery Plan** | 16d | 2024-12-30 | 2025-01-21 |
| 14 | **Bid Document** | 16d | 2025-01-06 | 2025-01-27 |

Changed:

| ID | Task | Start | Finish | Duration | Total float | Predecessors | Other |
| --- | --- | --- | --- | --- | --- | --- | --- |
| 4 | Determine Installation Requirements |  |  |  |  | none → 3 |  |
| 5 | Create Technical Specification | 2024-12-09 → 2024-12-13 (+4d) | 2024-12-13 → 2024-12-19 (+6d) |  | 3d → 4d | none → 4 |  |
| 6 | Identify Supplier Components | 2024-12-09 → 2024-12-20 (+11d) | 2024-12-10 → 2024-12-23 (+13d) |  | 6d → 4d | none → 5 |  |
| 7 | Validate Technical Specification | 2024-12-09 → 2024-12-24 (+15d) | 2024-12-10 → 2024-12-27 (+17d) |  |  | none → 6 |  |
| 9 | Document Delivery Methodology | 2024-12-09 → 2024-12-30 (+21d) | 2024-12-12 → 2025-01-03 (+22d) |  | 4d → 6d | none → 7 |  |
| 10 | Obtain Quotes from Suppliers | 2024-12-09 → 2025-01-02 (+24d) | 2024-12-18 → 2025-01-13 (+26d) |  |  | none → 6 | constraint none → start no earlier than 2025-01-02 |
| 11 | Calculate the Bid Estimate | 2024-12-09 → 2025-01-14 (+36d) | 2024-12-11 → 2025-01-16 (+36d) |  | 6d → 0d | none → 9, 10 |  |
| 12 | Create the Project Schedule | 2024-12-09 → 2025-01-17 (+39d) | 2024-12-11 → 2025-01-20 (+40d) |  | 6d → 0d | none → 11 |  |
| 13 | Review the Delivery Plan | 2024-12-09 → 2025-01-21 (+43d) | 2024-12-09 → 2025-01-21 (+43d) |  | 7d → 0d | none → 12 |  |
| 15 | Create Draft of Bid Document | 2024-12-09 → 2025-01-06 (+28d) | 2024-12-16 → 2025-01-13 (+28d) |  | 2d → 6d | none → 9 |  |
| 16 | Review Bid Document | 2024-12-09 → 2025-01-22 (+44d) | 2024-12-12 → 2025-01-23 (+42d) | 4d → 2d | 4d → 0d | none → 13, 15 |  |
| 17 | Finalize and Submit Bid Document | 2024-12-09 → 2025-01-24 (+46d) | 2024-12-10 → 2025-01-27 (+48d) |  | 6d → 0d | none → 16 |  |
| 18 | Bid Document Submitted | 2024-12-09 → 2025-01-27 (+49d) | 2024-12-09 → 2025-01-27 (+49d) |  | 8d → 0d | none → 17 | constraint none → finish no later than 2025-01-27 |

## Version 3 (data date 2024-12-13, saved 2021-10-26, file OzBuild Workshop 14 End Para 12.mpp)

Last finish stays 2025-01-27. Complete tasks 0 → 2.

Changed:

| ID | Task | Start | Finish | Complete | Total float | Other |
| --- | --- | --- | --- | --- | --- | --- |
| 1 | **Bid for Facility Extension** | 2024-12-09 A |  | 0% → 12% |  | baseline start none → 2024-12-09; baseline finish none → 2025-01-27 |
| 2 | **Technical Specification** | 2024-12-09 A |  | 0% → 38% | 4d → 6d | baseline start none → 2024-12-09; baseline finish none → 2024-12-27 |
| 3 | Approval to Bid | 2024-12-09 A | 2024-12-09 A | 0% → 100% | 4d → none | baseline start none → 2024-12-09; baseline finish none → 2024-12-09 |
| 4 | Determine Installation Requirements | 2024-12-09 A | 2024-12-12 A | 0% → 100% | 4d → none | baseline start none → 2024-12-09; baseline finish none → 2024-12-12 |
| 5 | Create Technical Specification | 2024-12-13 A |  | 0% → 20% |  | baseline start none → 2024-12-13; baseline finish none → 2024-12-19 |
| 6 | Identify Supplier Components |  |  |  |  | baseline start none → 2024-12-20; baseline finish none → 2024-12-23 |
| 7 | Validate Technical Specification |  |  |  |  | baseline start none → 2024-12-24; baseline finish none → 2024-12-27 |
| 8 | **Delivery Plan** |  |  |  |  | baseline start none → 2024-12-30; baseline finish none → 2025-01-21 |
| 9 | Document Delivery Methodology |  |  |  |  | baseline start none → 2024-12-30; baseline finish none → 2025-01-03 |
| 10 | Obtain Quotes from Suppliers |  |  |  |  | baseline start none → 2025-01-02; baseline finish none → 2025-01-13 |
| 11 | Calculate the Bid Estimate |  |  |  |  | baseline start none → 2025-01-14; baseline finish none → 2025-01-16 |
| 12 | Create the Project Schedule |  |  |  |  | baseline start none → 2025-01-17; baseline finish none → 2025-01-20 |
| 13 | Review the Delivery Plan |  |  |  |  | baseline start none → 2025-01-21; baseline finish none → 2025-01-21 |
| 14 | **Bid Document** |  |  |  |  | baseline start none → 2025-01-06; baseline finish none → 2025-01-27 |
| 15 | Create Draft of Bid Document |  |  |  |  | baseline start none → 2025-01-06; baseline finish none → 2025-01-13 |
| 16 | Review Bid Document |  |  |  |  | baseline start none → 2025-01-22; baseline finish none → 2025-01-23 |
| 17 | Finalize and Submit Bid Document |  |  |  |  | baseline start none → 2025-01-24; baseline finish none → 2025-01-27 |
| 18 | Bid Document Submitted |  |  |  |  | baseline start none → 2025-01-27; baseline finish none → 2025-01-27 |

## Version 4 (saved 2021-10-26, file OzBuild Workshop 05.mpp)

Last finish 2025-01-27 → 2024-12-18 (-40d). Complete tasks 2 → 0.

Changed:

| ID | Task | Start | Finish | Duration | Complete | Total float | Predecessors | Other |
| --- | --- | --- | --- | --- | --- | --- | --- | --- |
| 1 | **Bid for Facility Extension** | 2024-12-09 A → 2024-12-09 | 2025-01-27 → 2024-12-18 (-40d) | 33d → 8d | 12% → 0% |  |  | baseline start 2024-12-09 → none; baseline finish 2025-01-27 → none |
| 2 | **Technical Specification** | 2024-12-09 A → 2024-12-09 | 2024-12-27 → 2024-12-13 (-14d) | 13d → 5d | 38% → 0% | 6d → 3d |  | baseline start 2024-12-09 → none; baseline finish 2024-12-27 → none |
| 3 | Approval to Bid | 2024-12-09 A → 2024-12-09 | 2024-12-09 A → 2024-12-09 |  | 100% → 0% | none → 8d |  | baseline start 2024-12-09 → none; baseline finish 2024-12-09 → none |
| 4 | Determine Installation Requirements | 2024-12-09 A → 2024-12-09 | 2024-12-12 A → 2024-12-12 |  | 100% → 0% | none → 4d | 3 → none | baseline start 2024-12-09 → none; baseline finish 2024-12-12 → none |
| 5 | Create Technical Specification | 2024-12-13 A → 2024-12-09 (-4d) | 2024-12-19 → 2024-12-13 (-6d) |  | 20% → 0% | 4d → 3d | 4 → none | baseline start 2024-12-13 → none; baseline finish 2024-12-19 → none |
| 6 | Identify Supplier Components | 2024-12-20 → 2024-12-09 (-11d) | 2024-12-23 → 2024-12-10 (-13d) |  |  | 4d → 6d | 5 → none | baseline start 2024-12-20 → none; baseline finish 2024-12-23 → none |
| 7 | Validate Technical Specification | 2024-12-24 → 2024-12-09 (-15d) | 2024-12-27 → 2024-12-10 (-17d) |  |  |  | 6 → none | baseline start 2024-12-24 → none; baseline finish 2024-12-27 → none |
| 8 | **Delivery Plan** | 2024-12-30 → 2024-12-09 (-21d) | 2025-01-21 → 2024-12-18 (-34d) | 16d → 8d |  |  |  | baseline start 2024-12-30 → none; baseline finish 2025-01-21 → none |
| 9 | Document Delivery Methodology | 2024-12-30 → 2024-12-09 (-21d) | 2025-01-03 → 2024-12-12 (-22d) |  |  | 6d → 4d | 7 → none | baseline start 2024-12-30 → none; baseline finish 2025-01-03 → none |
| 10 | Obtain Quotes from Suppliers | 2025-01-02 → 2024-12-09 (-24d) | 2025-01-13 → 2024-12-18 (-26d) |  |  |  | 6 → none | constraint start no earlier than 2025-01-02 → none; baseline start 2025-01-02 → none; baseline finish 2025-01-13 → none |
| 11 | Calculate the Bid Estimate | 2025-01-14 → 2024-12-09 (-36d) | 2025-01-16 → 2024-12-11 (-36d) |  |  | 0d → 6d | 9, 10 → none | baseline start 2025-01-14 → none; baseline finish 2025-01-16 → none |
| 12 | Create the Project Schedule | 2025-01-17 → 2024-12-09 (-39d) | 2025-01-20 → 2024-12-11 (-40d) |  |  | 0d → 6d | 11 → none | baseline start 2025-01-17 → none; baseline finish 2025-01-20 → none |
| 13 | Review the Delivery Plan | 2025-01-21 → 2024-12-09 (-43d) | 2025-01-21 → 2024-12-09 (-43d) |  |  | 0d → 7d | 12 → none | baseline start 2025-01-21 → none; baseline finish 2025-01-21 → none |
| 14 | **Bid Document** | 2025-01-06 → 2024-12-09 (-28d) | 2025-01-27 → 2024-12-16 (-42d) | 16d → 6d |  | 0d → 2d |  | baseline start 2025-01-06 → none; baseline finish 2025-01-27 → none |
| 15 | Create Draft of Bid Document | 2025-01-06 → 2024-12-09 (-28d) | 2025-01-13 → 2024-12-16 (-28d) |  |  | 6d → 2d | 9 → none | baseline start 2025-01-06 → none; baseline finish 2025-01-13 → none |
| 16 | Review Bid Document | 2025-01-22 → 2024-12-09 (-44d) | 2025-01-23 → 2024-12-12 (-42d) | 2d → 4d |  | 0d → 4d | 13, 15 → none | baseline start 2025-01-22 → none; baseline finish 2025-01-23 → none |
| 17 | Finalize and Submit Bid Document | 2025-01-24 → 2024-12-09 (-46d) | 2025-01-27 → 2024-12-10 (-48d) |  |  | 0d → 6d | 16 → none | baseline start 2025-01-24 → none; baseline finish 2025-01-27 → none |
| 18 | Bid Document Submitted | 2025-01-27 → 2024-12-09 (-49d) | 2025-01-27 → 2024-12-09 (-49d) |  |  | 0d → 8d | 17 → none | constraint finish no later than 2025-01-27 → none; baseline start 2025-01-27 → none; baseline finish 2025-01-27 → none |

## Version 5 (saved 2021-10-26, file OzBuild Workshop 07.mpp)

Last finish 2024-12-18 → 2025-01-23 (+36d).

Changed:

| ID | Task | Start | Finish | Duration | Total float | Predecessors |
| --- | --- | --- | --- | --- | --- | --- |
| 1 | **Bid for Facility Extension** |  | 2024-12-18 → 2025-01-23 (+36d) | 8d → 31d |  |  |
| 2 | **Technical Specification** |  | 2024-12-13 → 2024-12-27 (+14d) | 5d → 13d | 3d → 0d |  |
| 4 | Determine Installation Requirements |  |  |  | 4d → 0d | none → 3 |
| 5 | Create Technical Specification | 2024-12-09 → 2024-12-13 (+4d) | 2024-12-13 → 2024-12-19 (+6d) |  | 3d → 0d | none → 4 |
| 6 | Identify Supplier Components | 2024-12-09 → 2024-12-20 (+11d) | 2024-12-10 → 2024-12-23 (+13d) |  | 6d → 0d | none → 5 |
| 7 | Validate Technical Specification | 2024-12-09 → 2024-12-24 (+15d) | 2024-12-10 → 2024-12-27 (+17d) |  | 6d → 2d | none → 6 |
| 8 | **Delivery Plan** | 2024-12-09 → 2024-12-24 (+15d) | 2024-12-18 → 2025-01-15 (+28d) | 8d → 14d |  |  |
| 9 | Document Delivery Methodology | 2024-12-09 → 2024-12-30 (+21d) | 2024-12-12 → 2025-01-03 (+22d) |  | 4d → 2d | none → 7 |
| 10 | Obtain Quotes from Suppliers | 2024-12-09 → 2024-12-24 (+15d) | 2024-12-18 → 2025-01-07 (+20d) |  |  | none → 6 |
| 11 | Calculate the Bid Estimate | 2024-12-09 → 2025-01-08 (+30d) | 2024-12-11 → 2025-01-10 (+30d) |  | 6d → 0d | none → 9, 10 |
| 12 | Create the Project Schedule | 2024-12-09 → 2025-01-11 (+33d) | 2024-12-11 → 2025-01-14 (+34d) |  | 6d → 0d | none → 11 |
| 13 | Review the Delivery Plan | 2024-12-09 → 2025-01-15 (+37d) | 2024-12-09 → 2025-01-15 (+37d) |  | 7d → 0d | none → 12 |
| 14 | **Bid Document** | 2024-12-09 → 2025-01-06 (+28d) | 2024-12-16 → 2025-01-23 (+38d) | 6d → 14d | 2d → 0d |  |
| 15 | Create Draft of Bid Document | 2024-12-09 → 2025-01-06 (+28d) | 2024-12-16 → 2025-01-13 (+28d) |  |  | none → 9 |
| 16 | Review Bid Document | 2024-12-09 → 2025-01-16 (+38d) | 2024-12-12 → 2025-01-21 (+40d) |  | 4d → 0d | none → 13, 15 |
| 17 | Finalize and Submit Bid Document | 2024-12-09 → 2025-01-22 (+44d) | 2024-12-10 → 2025-01-23 (+44d) |  | 6d → 0d | none → 16 |
| 18 | Bid Document Submitted | 2024-12-09 → 2025-01-23 (+45d) | 2024-12-09 → 2025-01-23 (+45d) |  | 8d → 0d | none → 17 |

## Version 6 (saved 2021-10-26, file OzBuild Workshop 09.mpp)

Last finish 2025-01-23 → 2025-01-27 (+4d).

Changed:

| ID | Task | Start | Finish | Duration | Other |
| --- | --- | --- | --- | --- | --- |
| 1 | **Bid for Facility Extension** |  | 2025-01-23 → 2025-01-27 (+4d) | 31d → 33d |  |
| 8 | **Delivery Plan** | 2024-12-24 → 2024-12-30 (+6d) | 2025-01-15 → 2025-01-21 (+6d) | 14d → 16d |  |
| 10 | Obtain Quotes from Suppliers | 2024-12-24 → 2025-01-02 (+9d) | 2025-01-07 → 2025-01-13 (+6d) |  | constraint none → start no earlier than 2025-01-02 |
| 11 | Calculate the Bid Estimate | 2025-01-08 → 2025-01-14 (+6d) | 2025-01-10 → 2025-01-16 (+6d) |  |  |
| 12 | Create the Project Schedule | 2025-01-11 → 2025-01-17 (+6d) | 2025-01-14 → 2025-01-20 (+6d) |  |  |
| 13 | Review the Delivery Plan | 2025-01-15 → 2025-01-21 (+6d) | 2025-01-15 → 2025-01-21 (+6d) |  |  |
| 14 | **Bid Document** |  | 2025-01-23 → 2025-01-27 (+4d) | 14d → 16d |  |
| 16 | Review Bid Document | 2025-01-16 → 2025-01-22 (+6d) | 2025-01-21 → 2025-01-23 (+2d) | 4d → 2d |  |
| 17 | Finalize and Submit Bid Document | 2025-01-22 → 2025-01-24 (+2d) | 2025-01-23 → 2025-01-27 (+4d) |  |  |
| 18 | Bid Document Submitted | 2025-01-23 → 2025-01-27 (+4d) | 2025-01-23 → 2025-01-27 (+4d) |  | constraint none → finish no later than 2025-01-27 |

## Version 7 (saved 2021-10-26, file OzBuild Workshop 14 End Para 09.mpp)

Last finish stays 2025-01-27.

Changed:

| ID | Task | Other |
| --- | --- | --- |
| 1 | **Bid for Facility Extension** | baseline start none → 2024-12-09; baseline finish none → 2025-01-27 |
| 2 | **Technical Specification** | baseline start none → 2024-12-09; baseline finish none → 2024-12-27 |
| 3 | Approval to Bid | baseline start none → 2024-12-09; baseline finish none → 2024-12-09 |
| 4 | Determine Installation Requirements | baseline start none → 2024-12-09; baseline finish none → 2024-12-12 |
| 5 | Create Technical Specification | baseline start none → 2024-12-13; baseline finish none → 2024-12-19 |
| 6 | Identify Supplier Components | baseline start none → 2024-12-20; baseline finish none → 2024-12-23 |
| 7 | Validate Technical Specification | baseline start none → 2024-12-24; baseline finish none → 2024-12-27 |
| 8 | **Delivery Plan** | baseline start none → 2024-12-30; baseline finish none → 2025-01-21 |
| 9 | Document Delivery Methodology | baseline start none → 2024-12-30; baseline finish none → 2025-01-03 |
| 10 | Obtain Quotes from Suppliers | baseline start none → 2025-01-02; baseline finish none → 2025-01-13 |
| 11 | Calculate the Bid Estimate | baseline start none → 2025-01-14; baseline finish none → 2025-01-16 |
| 12 | Create the Project Schedule | baseline start none → 2025-01-17; baseline finish none → 2025-01-20 |
| 13 | Review the Delivery Plan | baseline start none → 2025-01-21; baseline finish none → 2025-01-21 |
| 14 | **Bid Document** | baseline start none → 2025-01-06; baseline finish none → 2025-01-27 |
| 15 | Create Draft of Bid Document | baseline start none → 2025-01-06; baseline finish none → 2025-01-13 |
| 16 | Review Bid Document | baseline start none → 2025-01-22; baseline finish none → 2025-01-23 |
| 17 | Finalize and Submit Bid Document | baseline start none → 2025-01-24; baseline finish none → 2025-01-27 |
| 18 | Bid Document Submitted | baseline start none → 2025-01-27; baseline finish none → 2025-01-27 |

## Version 8 (data date 2024-12-13, saved 2021-10-26, file OzBuild Workshop 14 End Para 18.mpp)

Last finish stays 2025-01-27. Complete tasks 0 → 2.

Changed:

| ID | Task | Start | Finish | Duration | Complete | Total float |
| --- | --- | --- | --- | --- | --- | --- |
| 1 | **Bid for Facility Extension** | 2024-12-09 → 2024-12-10 A (+1d) |  | 33d → 32d | 0% → 11% |  |
| 2 | **Technical Specification** | 2024-12-09 → 2024-12-10 A (+1d) | 2024-12-27 → 2024-12-31 (+4d) | 13d → 14d | 0% → 33% |  |
| 3 | Approval to Bid | 2024-12-09 → 2024-12-10 A (+1d) | 2024-12-09 → 2024-12-10 A (+1d) |  | 0% → 100% | 4d → none |
| 4 | Determine Installation Requirements | 2024-12-09 → 2024-12-10 A (+1d) | 2024-12-12 A | 4d → 3d | 0% → 100% | 4d → none |
| 5 | Create Technical Specification | 2024-12-13 → 2024-12-12 A (-1d) | 2024-12-19 → 2024-12-23 (+4d) | 5d → 8d | 0% → 25% | 4d → 2d |
| 6 | Identify Supplier Components | 2024-12-20 → 2024-12-24 (+4d) | 2024-12-23 → 2024-12-27 (+4d) |  |  | 4d → 2d |
| 7 | Validate Technical Specification | 2024-12-24 → 2024-12-30 (+6d) | 2024-12-27 → 2024-12-31 (+4d) |  |  | 6d → 4d |
| 8 | **Delivery Plan** | 2024-12-30 → 2025-01-02 (+3d) |  | 16d → 14d |  |  |
| 9 | Document Delivery Methodology | 2024-12-30 → 2025-01-02 (+3d) | 2025-01-03 → 2025-01-07 (+4d) |  |  | 6d → 4d |
| 14 | **Bid Document** | 2025-01-06 → 2025-01-08 (+2d) |  | 16d → 14d |  |  |
| 15 | Create Draft of Bid Document | 2025-01-06 → 2025-01-08 (+2d) | 2025-01-13 → 2025-01-15 (+2d) |  |  | 6d → 4d |

## Version 9 (data date 2024-12-20, saved 2021-10-26, file OzBuild Workshop 14 End Para 25.mpp)

Last finish stays 2025-01-27. Complete tasks 2 → 3.

Changed:

| ID | Task | Start | Finish | Duration | Complete | Total float |
| --- | --- | --- | --- | --- | --- | --- |
| 1 | **Bid for Facility Extension** |  |  |  | 11% → 24% |  |
| 2 | **Technical Specification** |  | 2024-12-31 → 2025-01-07 (+7d) | 14d → 18d | 33% → 50% | 4d → 0d |
| 5 | Create Technical Specification |  | 2024-12-23 → 2024-12-20 A (-3d) | 8d → 7d | 25% → 100% | 2d → none |
| 6 | Identify Supplier Components | 2024-12-24 → 2024-12-19 A (-5d) | 2024-12-27 → 2024-12-30 (+3d) | 2d → 6d | 0% → 33% | 2d → -4d |
| 7 | Validate Technical Specification | 2024-12-30 → 2024-12-20 A (-10d) | 2024-12-31 → 2025-01-07 (+7d) | 2d → 10d | 0% → 10% | 4d → 0d |
| 9 | Document Delivery Methodology | 2025-01-02 → 2025-01-08 (+6d) | 2025-01-07 → 2025-01-13 (+6d) |  |  | 4d → 0d |
| 14 | **Bid Document** | 2025-01-08 → 2025-01-14 (+6d) |  | 14d → 10d |  |  |
| 15 | Create Draft of Bid Document | 2025-01-08 → 2025-01-14 (+6d) | 2025-01-15 → 2025-01-21 (+6d) |  |  | 4d → 0d |

## Version 10 (data date 2024-12-20, saved 2021-10-26, file OzBuild Workshop 14 End Para 29.mpp)

Last finish 2025-01-27 → 2025-01-31 (+4d).

Changed:

| ID | Task | Start | Finish | Duration | Total float |
| --- | --- | --- | --- | --- | --- |
| 1 | **Bid for Facility Extension** |  | 2025-01-27 → 2025-01-31 (+4d) | 32d → 36d | 0d → -4d |
| 2 | **Technical Specification** |  | 2025-01-07 → 2025-01-13 (+6d) | 18d → 22d | 0d → -4d |
| 7 | Validate Technical Specification |  | 2025-01-07 → 2025-01-13 (+6d) |  | 0d → -4d |
| 8 | **Delivery Plan** |  | 2025-01-21 → 2025-01-27 (+6d) | 14d → 18d | 0d → -4d |
| 9 | Document Delivery Methodology | 2025-01-08 → 2025-01-14 (+6d) | 2025-01-13 → 2025-01-17 (+4d) |  | 0d → -4d |
| 11 | Calculate the Bid Estimate | 2025-01-14 → 2025-01-18 (+4d) | 2025-01-16 → 2025-01-21 (+5d) |  | 0d → -4d |
| 12 | Create the Project Schedule | 2025-01-17 → 2025-01-22 (+5d) | 2025-01-20 → 2025-01-24 (+4d) |  | 0d → -4d |
| 13 | Review the Delivery Plan | 2025-01-21 → 2025-01-27 (+6d) | 2025-01-21 → 2025-01-27 (+6d) |  | 0d → -4d |
| 14 | **Bid Document** | 2025-01-14 → 2025-01-20 (+6d) | 2025-01-27 → 2025-01-31 (+4d) |  | 0d → -4d |
| 15 | Create Draft of Bid Document | 2025-01-14 → 2025-01-20 (+6d) | 2025-01-21 → 2025-01-27 (+6d) |  | 0d → -4d |
| 16 | Review Bid Document | 2025-01-22 → 2025-01-28 (+6d) | 2025-01-23 → 2025-01-29 (+6d) |  | 0d → -4d |
| 17 | Finalize and Submit Bid Document | 2025-01-24 → 2025-01-30 (+6d) | 2025-01-27 → 2025-01-31 (+4d) |  | 0d → -4d |
| 18 | Bid Document Submitted | 2025-01-27 → 2025-01-31 (+4d) | 2025-01-27 → 2025-01-31 (+4d) |  | 0d → -4d |

## Version 11 (saved 2021-10-27, file OzBuild Workshop 17.mpp)

Last finish 2025-01-31 → 2025-02-06 (+6d). Complete tasks 3 → 0.

Changed:

| ID | Task | Start | Finish | Duration | Complete | Total float | Other |
| --- | --- | --- | --- | --- | --- | --- | --- |
| 1 | **Bid for Facility Extension** | 2024-12-10 A → 2024-12-09 (-1d) | 2025-01-31 → 2025-02-06 (+6d) | 36d → 41d | 24% → 0% | -4d → -8d |  |
| 2 | **Technical Specification** | 2024-12-10 A → 2024-12-09 (-1d) | 2025-01-13 → 2024-12-27 (-17d) | 22d → 13d | 50% → 0% | -4d → -5d |  |
| 3 | Approval to Bid | 2024-12-10 A → 2024-12-09 (-1d) | 2024-12-10 A → 2024-12-09 (-1d) |  | 100% → 0% | none → -5d |  |
| 4 | Determine Installation Requirements | 2024-12-10 A → 2024-12-09 (-1d) | 2024-12-12 A → 2024-12-12 | 3d → 4d | 100% → 0% | none → -5d | resources none → Project Manager; Systems Engineer |
| 5 | Create Technical Specification | 2024-12-12 A → 2024-12-13 (+1d) | 2024-12-20 A → 2024-12-19 (-1d) | 7d → 5d | 100% → 0% | none → -5d | resources none → Systems Engineer; Specialist Consultant [0.1%] |
| 6 | Identify Supplier Components | 2024-12-19 A → 2024-12-20 (+1d) | 2024-12-30 → 2024-12-23 (-7d) | 6d → 2d | 33% → 0% | 0d → -5d | resources none → Purchasing Officer |
| 7 | Validate Technical Specification | 2024-12-20 A → 2024-12-24 (+4d) | 2025-01-13 → 2024-12-27 (-17d) | 10d → 2d | 10% → 0% | -4d → -5d | resources none → Project Manager; Systems Engineer |
| 8 | **Delivery Plan** | 2025-01-02 → 2024-12-30 (-3d) | 2025-01-27 → 2025-01-23 (-4d) |  |  | -4d → -5d |  |
| 9 | Document Delivery Methodology | 2025-01-14 → 2024-12-30 (-15d) | 2025-01-17 → 2025-01-03 (-14d) |  |  | -4d → -5d | resources none → Project Manager |
| 10 | Obtain Quotes from Suppliers | 2025-01-02 → 2025-01-06 (+4d) | 2025-01-13 → 2025-01-15 (+2d) |  |  | 0d → -2d | resources none → Purchasing Officer; Project Manager |
| 11 | Calculate the Bid Estimate | 2025-01-18 → 2025-01-16 (-2d) | 2025-01-21 → 2025-01-18 (-3d) |  |  | -4d → -2d | resources none → Project Support |
| 12 | Create the Project Schedule | 2025-01-22 → 2025-01-20 (-2d) | 2025-01-24 → 2025-01-22 (-2d) |  |  | -4d → -2d | resources none → Project Support |
| 13 | Review the Delivery Plan | 2025-01-27 → 2025-01-23 (-4d) | 2025-01-27 → 2025-01-23 (-4d) |  |  | -4d → -2d | resources none → Project Manager; Systems Engineer |
| 14 | **Bid Document** | 2025-01-20 → 2025-01-24 (+4d) | 2025-01-31 → 2025-02-06 (+6d) |  |  | -4d → -8d |  |
| 15 | Create Draft of Bid Document | 2025-01-20 → 2025-01-24 (+4d) | 2025-01-27 → 2025-01-31 (+4d) |  |  | -4d → -8d | resources none → Clerical Support; Project Manager |
| 16 | Review Bid Document | 2025-01-28 → 2025-02-03 (+6d) | 2025-01-29 → 2025-02-04 (+6d) |  |  | -4d → -8d | resources none → Systems Engineer; Project Manager |
| 17 | Finalize and Submit Bid Document | 2025-01-30 → 2025-02-05 (+6d) | 2025-01-31 → 2025-02-06 (+6d) |  |  | -4d → -8d | resources none → Project Manager; Report Binding [3 Each] |
| 18 | Bid Document Submitted | 2025-01-31 → 2025-02-06 (+6d) | 2025-01-31 → 2025-02-06 (+6d) |  |  | -4d → -8d |  |

## Version 12 (saved 2021-10-28, file OzBuild Workshop 18 End Para 10.mpp)

Last finish 2025-02-06 → 2025-01-27 (-10d).

Changed:

| ID | Task | Start | Finish | Duration | Total float |
| --- | --- | --- | --- | --- | --- |
| 1 | **Bid for Facility Extension** |  | 2025-02-06 → 2025-01-27 (-10d) | 41d → 33d | -8d → 0d |
| 8 | **Delivery Plan** |  | 2025-01-23 → 2025-01-21 (-2d) | 18d → 16d | -5d → 0d |
| 10 | Obtain Quotes from Suppliers | 2025-01-06 → 2025-01-02 (-4d) | 2025-01-15 → 2025-01-13 (-2d) |  | -2d → 0d |
| 11 | Calculate the Bid Estimate | 2025-01-16 → 2025-01-14 (-2d) | 2025-01-18 → 2025-01-16 (-2d) |  | -2d → 0d |
| 12 | Create the Project Schedule | 2025-01-20 → 2025-01-17 (-3d) | 2025-01-22 → 2025-01-20 (-2d) |  | -2d → 0d |
| 13 | Review the Delivery Plan | 2025-01-23 → 2025-01-21 (-2d) | 2025-01-23 → 2025-01-21 (-2d) |  | -2d → 0d |
| 14 | **Bid Document** | 2025-01-24 → 2025-01-06 (-18d) | 2025-02-06 → 2025-01-27 (-10d) | 10d → 16d | -8d → 0d |
| 15 | Create Draft of Bid Document | 2025-01-24 → 2025-01-06 (-18d) | 2025-01-31 → 2025-01-13 (-18d) |  | -8d → 6d |
| 16 | Review Bid Document | 2025-02-03 → 2025-01-22 (-12d) | 2025-02-04 → 2025-01-23 (-12d) |  | -8d → 0d |
| 17 | Finalize and Submit Bid Document | 2025-02-05 → 2025-01-24 (-12d) | 2025-02-06 → 2025-01-27 (-10d) |  | -8d → 0d |
| 18 | Bid Document Submitted | 2025-02-06 → 2025-01-27 (-10d) | 2025-02-06 → 2025-01-27 (-10d) |  | -8d → 0d |

## Version 13 (data date 2024-12-13, saved 2021-10-28, file OzBuild Workshop 18 End Para 11.mpp)

Last finish stays 2025-01-27. Complete tasks 0 → 2.

Changed:

| ID | Task | Start | Finish | Complete | Total float |
| --- | --- | --- | --- | --- | --- |
| 1 | **Bid for Facility Extension** | 2024-12-09 A |  | 0% → 12% |  |
| 2 | **Technical Specification** | 2024-12-09 A |  | 0% → 38% | 4d → 6d |
| 3 | Approval to Bid | 2024-12-09 A | 2024-12-09 A | 0% → 100% | 4d → none |
| 4 | Determine Installation Requirements | 2024-12-09 A | 2024-12-12 A | 0% → 100% | 4d → none |
| 5 | Create Technical Specification | 2024-12-13 A |  | 0% → 20% |  |

## Version 14 (data date 2024-12-13, saved 2021-10-28, file OzBuild Workshop 18 End Para 12.mpp)

Last finish stays 2025-01-27.

Changed:

| ID | Task | Finish | Duration | Complete |
| --- | --- | --- | --- | --- |
| 1 | **Bid for Facility Extension** |  |  | 12% → 10% |
| 2 | **Technical Specification** |  |  | 38% → 33% |
| 4 | Determine Installation Requirements | 2024-12-12 A → 2024-12-11 A (-1d) | 4d → 3d |  |

## Version 15 (data date 2024-12-13, saved 2021-10-28, file OzBuild Workshop 18 End Para 14.mpp)

Last finish stays 2025-01-27.

Changed:

| ID | Task | Start | Finish | Duration | Complete | Total float |
| --- | --- | --- | --- | --- | --- | --- |
| 1 | **Bid for Facility Extension** |  |  |  | 10% → 13% |  |
| 2 | **Technical Specification** |  | 2024-12-27 → 2024-12-31 (+4d) | 13d → 15d | 33% → 38% | 6d → 4d |
| 5 | Create Technical Specification | 2024-12-13 A → 2024-12-11 A (-2d) | 2024-12-19 → 2024-12-23 (+4d) | 5d → 9d | 20% → 33% | 4d → 2d |
| 6 | Identify Supplier Components | 2024-12-20 → 2024-12-24 (+4d) | 2024-12-23 → 2024-12-27 (+4d) |  |  | 4d → 2d |
| 7 | Validate Technical Specification | 2024-12-24 → 2024-12-30 (+6d) | 2024-12-27 → 2024-12-31 (+4d) |  |  | 6d → 4d |
| 8 | **Delivery Plan** | 2024-12-30 → 2025-01-02 (+3d) |  | 16d → 14d |  |  |
| 9 | Document Delivery Methodology | 2024-12-30 → 2025-01-02 (+3d) | 2025-01-03 → 2025-01-07 (+4d) |  |  | 6d → 4d |
| 14 | **Bid Document** | 2025-01-06 → 2025-01-08 (+2d) |  | 16d → 14d |  |  |
| 15 | Create Draft of Bid Document | 2025-01-06 → 2025-01-08 (+2d) | 2025-01-13 → 2025-01-15 (+2d) |  |  | 6d → 4d |

## Version 16 (data date 2024-12-13, saved 2021-10-28, file OzBuild Workshop 18 End Para 18.mpp)

Last finish 2025-01-27 → 2025-01-28 (+1d).

Changed:

| ID | Task | Start | Finish | Duration | Complete | Total float |
| --- | --- | --- | --- | --- | --- | --- |
| 1 | **Bid for Facility Extension** |  | 2025-01-27 → 2025-01-28 (+1d) | 33d → 34d |  | 0d → -1d |
| 2 | **Technical Specification** |  | 2024-12-31 → 2025-01-06 (+6d) | 15d → 18d | 38% → 32% | 4d → 1d |
| 5 | Create Technical Specification |  | 2024-12-23 → 2024-12-30 (+7d) | 9d → 12d |  | 2d → -1d |
| 6 | Identify Supplier Components | 2024-12-24 → 2024-12-31 (+7d) | 2024-12-27 → 2025-01-02 (+6d) |  |  | 2d → -1d |
| 7 | Validate Technical Specification | 2024-12-30 → 2025-01-03 (+4d) | 2024-12-31 → 2025-01-06 (+6d) |  |  | 4d → 1d |
| 8 | **Delivery Plan** | 2025-01-02 → 2025-01-03 (+1d) | 2025-01-21 → 2025-01-22 (+1d) |  |  | 0d → -1d |
| 9 | Document Delivery Methodology | 2025-01-02 → 2025-01-07 (+5d) | 2025-01-07 → 2025-01-10 (+3d) |  |  | 4d → 1d |
| 10 | Obtain Quotes from Suppliers | 2025-01-02 → 2025-01-03 (+1d) | 2025-01-13 → 2025-01-14 (+1d) |  |  | 0d → -1d |
| 11 | Calculate the Bid Estimate | 2025-01-14 → 2025-01-15 (+1d) | 2025-01-16 → 2025-01-17 (+1d) |  |  | 0d → -1d |
| 12 | Create the Project Schedule | 2025-01-17 → 2025-01-18 (+1d) | 2025-01-20 → 2025-01-21 (+1d) |  |  | 0d → -1d |
| 13 | Review the Delivery Plan | 2025-01-21 → 2025-01-22 (+1d) | 2025-01-21 → 2025-01-22 (+1d) |  |  | 0d → -1d |
| 14 | **Bid Document** | 2025-01-08 → 2025-01-13 (+5d) | 2025-01-27 → 2025-01-28 (+1d) | 14d → 12d |  | 0d → -1d |
| 15 | Create Draft of Bid Document | 2025-01-08 → 2025-01-13 (+5d) | 2025-01-15 → 2025-01-20 (+5d) |  |  | 4d → 1d |
| 16 | Review Bid Document | 2025-01-22 → 2025-01-23 (+1d) | 2025-01-23 → 2025-01-24 (+1d) |  |  | 0d → -1d |
| 17 | Finalize and Submit Bid Document | 2025-01-24 → 2025-01-27 (+3d) | 2025-01-27 → 2025-01-28 (+1d) |  |  | 0d → -1d |
| 18 | Bid Document Submitted | 2025-01-27 → 2025-01-28 (+1d) | 2025-01-27 → 2025-01-28 (+1d) |  |  | 0d → -1d |

## Version 17 (saved 2021-11-05, file OzBuild Workshop 16 Old.mpp)

Last finish 2025-01-28 → 2025-01-27 (-1d). Complete tasks 2 → 0.

Changed:

| ID | Task | Start | Finish | Duration | Complete | Total float | Other |
| --- | --- | --- | --- | --- | --- | --- | --- |
| 1 | **Bid for Facility Extension** | 2024-12-09 A → 2024-12-09 | 2025-01-28 → 2025-01-27 (-1d) | 34d → 33d | 13% → 0% | -1d → 0d | baseline start 2024-12-09 → none; baseline finish 2025-01-27 → none |
| 2 | **Technical Specification** | 2024-12-09 A → 2024-12-09 | 2025-01-06 → 2024-12-27 (-10d) | 18d → 13d | 32% → 0% | 1d → 4d | baseline start 2024-12-09 → none; baseline finish 2024-12-27 → none |
| 3 | Approval to Bid | 2024-12-09 A → 2024-12-09 | 2024-12-09 A → 2024-12-09 |  | 100% → 0% | none → 4d | baseline start 2024-12-09 → none; baseline finish 2024-12-09 → none |
| 4 | Determine Installation Requirements | 2024-12-09 A → 2024-12-09 | 2024-12-11 A → 2024-12-12 (+1d) | 3d → 4d | 100% → 0% | none → 4d | baseline start 2024-12-09 → none; baseline finish 2024-12-12 → none |
| 5 | Create Technical Specification | 2024-12-11 A → 2024-12-13 (+2d) | 2024-12-30 → 2024-12-19 (-11d) | 12d → 5d | 33% → 0% | -1d → 4d | baseline start 2024-12-13 → none; baseline finish 2024-12-19 → none |
| 6 | Identify Supplier Components | 2024-12-31 → 2024-12-20 (-11d) | 2025-01-02 → 2024-12-23 (-10d) |  |  | -1d → 4d | baseline start 2024-12-20 → none; baseline finish 2024-12-23 → none |
| 7 | Validate Technical Specification | 2025-01-03 → 2024-12-24 (-10d) | 2025-01-06 → 2024-12-27 (-10d) |  |  | 1d → 6d | baseline start 2024-12-24 → none; baseline finish 2024-12-27 → none |
| 8 | **Delivery Plan** | 2025-01-03 → 2024-12-30 (-4d) | 2025-01-22 → 2025-01-21 (-1d) | 14d → 16d |  | -1d → 0d | baseline start 2024-12-30 → none; baseline finish 2025-01-21 → none |
| 9 | Document Delivery Methodology | 2025-01-07 → 2024-12-30 (-8d) | 2025-01-10 → 2025-01-03 (-7d) |  |  | 1d → 6d | baseline start 2024-12-30 → none; baseline finish 2025-01-03 → none |
| 10 | Obtain Quotes from Suppliers | 2025-01-03 → 2025-01-02 (-1d) | 2025-01-14 → 2025-01-13 (-1d) |  |  | -1d → 0d | baseline start 2025-01-02 → none; baseline finish 2025-01-13 → none |
| 11 | Calculate the Bid Estimate | 2025-01-15 → 2025-01-14 (-1d) | 2025-01-17 → 2025-01-16 (-1d) |  |  | -1d → 0d | baseline start 2025-01-14 → none; baseline finish 2025-01-16 → none |
| 12 | Create the Project Schedule | 2025-01-18 → 2025-01-17 (-1d) | 2025-01-21 → 2025-01-20 (-1d) |  |  | -1d → 0d | baseline start 2025-01-17 → none; baseline finish 2025-01-20 → none |
| 13 | Review the Delivery Plan | 2025-01-22 → 2025-01-21 (-1d) | 2025-01-22 → 2025-01-21 (-1d) |  |  | -1d → 0d | baseline start 2025-01-21 → none; baseline finish 2025-01-21 → none |
| 14 | **Bid Document** | 2025-01-13 → 2025-01-06 (-7d) | 2025-01-28 → 2025-01-27 (-1d) | 12d → 16d |  | -1d → 0d | baseline start 2025-01-06 → none; baseline finish 2025-01-27 → none |
| 15 | Create Draft of Bid Document | 2025-01-13 → 2025-01-06 (-7d) | 2025-01-20 → 2025-01-13 (-7d) |  |  | 1d → 6d | baseline start 2025-01-06 → none; baseline finish 2025-01-13 → none |
| 16 | Review Bid Document | 2025-01-23 → 2025-01-22 (-1d) | 2025-01-24 → 2025-01-23 (-1d) |  |  | -1d → 0d | baseline start 2025-01-22 → none; baseline finish 2025-01-23 → none |
| 17 | Finalize and Submit Bid Document | 2025-01-27 → 2025-01-24 (-3d) | 2025-01-28 → 2025-01-27 (-1d) |  |  | -1d → 0d | baseline start 2025-01-24 → none; baseline finish 2025-01-27 → none |
| 18 | Bid Document Submitted | 2025-01-28 → 2025-01-27 (-1d) | 2025-01-28 → 2025-01-27 (-1d) |  |  | -1d → 0d | baseline start 2025-01-27 → none; baseline finish 2025-01-27 → none |
